# PO-3Phase-Profiles.120929.xml

Schedule from MS Project XML, 2012-10-01 to 2012-11-30.

## Calendars

- Estándar: Mon-Fri 09:00-13:00, 15:00-19:00; Sat-Sun off.

## Resources

| Resource |
| --- |
| Presales |
| Consultant |
| Administrator |
| Developer |

## Schedule

| ID | WBS | Task | Duration | Start | Finish | Predecessors | Total slack | Resources | Work |
| --- | --- | --- | --- | --- | --- | --- | --- | --- | --- |
| 2 | 1 | **Presales and Project Definition** | 3d | 2012-10-01 | 2012-10-03 |  | 0d |  | 48h |
| 3 | 1.1 | Project definition workshop | 2d | 2012-10-01 | 2012-10-02 |  | 0d | Presales; Consultant | 32h |
| 4 | 1.2 | Quoting | 1d | 2012-10-03 | 2012-10-03 | 3 | 0d | Consultant; Presales | 16h |
| 6 | 2 | **Fase 0 - Pilot** | 11.5d | 2012-10-11 | 2012-10-26 | 2FS+5d | 0d |  | 100h |
| 7 | 2.1 | Installation | 1d | 2012-10-11 | 2012-10-11 |  | 0d | Administrator | 8h |
| 8 | 2.2 | System preconfiguration | 0.5d | 2012-10-12 | 2012-10-12 | 7 | 0d | Consultant | 4h |
| 9 | 2.3 | Configuration Workshop | 2d | 2012-10-12 | 2012-10-16 | 8 | 0d | Consultant | 16h |
| 10 | 2.4 | Master data import definition | 0.5d | 2012-10-16 | 2012-10-16 | 9 | 0d | Developer; Consultant | 8h |
| 11 | 2.5 | Master data import | 7d | 2012-10-17 | 2012-10-25 | 10 | 0d | Developer | 56h |
| 12 | 2.6 | Sign-Off Meeting | 0.5d | 2012-10-26 | 2012-10-26 | 11 | 0d | Consultant; Presales | 8h |
| 14 | 3 | **Phase 1 - Basic System** | 7.5d | 2012-11-02 | 2012-11-13 | 6FS+5d | 0d |  | 80h |
| 15 | 3.1 | Develop Report Portfolio Overview | 1d | 2012-11-02 | 2012-11-05 |  | 0d | Developer | 8h |
| 16 | 3.2 | Develop Planning Extension for distributed teams | 1d | 2012-11-05 | 2012-11-06 | 15 | 0d | Developer | 8h |
| 17 | 3.3 | Develop Report Portfolio Value | 1d | 2012-11-06 | 2012-11-07 | 16 | 0d | Developer | 8h |
| 18 | 3.4 | User training | 2d | 2012-11-07 | 2012-11-09 | 17 | 0d | Consultant | 16h |
| 19 | 3.5 | Incorporate user feedback | 2d | 2012-11-09 | 2012-11-13 | 18 | 0d | Consultant; Developer | 32h |
| 20 | 3.6 | Sign-Off Meeting | 0.5d | 2012-11-13 | 2012-11-13 | 19 | 0d | Consultant; Presales | 8h |
| 22 | 4 | **Phase 2 - Productive System** | 7.5d | 2012-11-21 | 2012-11-30 | 14FS+5d | 0d |  | 88h |
| 23 | 4.1 | Develop remaining reports | 2d | 2012-11-21 | 2012-11-22 |  | 0d | Developer | 16h |
| 24 | 4.2 | Buffer for add-on functionality | 2.5d | 2012-11-23 | 2012-11-27 | 23 | 0d | Developer; Consultant | 40h |
| 25 | 4.3 | User training | 2d | 2012-11-27 | 2012-11-29 | 24 | 0d | Consultant | 16h |
| 26 | 4.4 | Sign-Off Meeting | 1d | 2012-11-29 | 2012-11-30 | 25 | 0d | Consultant; Presales | 16h |
