# PO-Add-On-Permissions.121011.xml

Schedule from MS Project XML, 2012-10-01 to 2012-10-30.

## Calendars

- Estándar: Mon-Fri 09:00-13:00, 15:00-19:00; Sat-Sun off.

## Resources

| Resource |
| --- |
| Presales |
| Consultant |
| Administrator |
| Developer |

## Schedule

| ID | WBS | Task | Type | Duration | Start | Finish | Predecessors | Total slack | Resources | Work |
| --- | --- | --- | --- | --- | --- | --- | --- | --- | --- | --- |
| 1 | 1 | **Presales and Project Definition** |  | 8d | 2012-10-01 09:00 | 2012-10-10 19:00 |  | 0d |  | 12h |
| 2 | 1.1 | Define Use Case |  | 0.5d | 2012-10-01 09:00 | 2012-10-01 13:00 |  | 0d | Consultant | 4h |
| 3 | 1.2 | Quoting |  | 0.5d | 2012-10-03 15:00 | 2012-10-03 19:00 | 2FS+2d | 0d | Presales; Consultant | 8h |
| 4 | 1.3 | Customer Order | milestone | 0d | 2012-10-10 19:00 | 2012-10-10 19:00 | 3FS+5d | 0d |  |  |
| 6 | 2 | **Feature Development** |  | 5d | 2012-10-15 09:00 | 2012-10-19 19:00 | 4FS+2d | 0d |  | 72h |
| 7 | 2.1 | Create Deltailed Use Case PowerPoint |  | 1d | 2012-10-15 09:00 | 2012-10-15 19:00 |  | 10.5d | Consultant; Developer | 16h |
| 8 | 2.2 | Business Analysis & Industry Best Practices |  | 1d | 2012-10-15 09:00 | 2012-10-15 19:00 |  | 10.5d | Consultant | 8h |
| 9 | 2.3 | Design Data-Model |  | 1d | 2012-10-15 09:00 | 2012-10-15 19:00 |  | 0d | Developer; Consultant | 16h |
| 10 | 2.4 | Create Package Extension |  | 1d | 2012-10-16 09:00 | 2012-10-16 19:00 | 9 | 0d | Developer | 8h |
| 11 | 2.5 | Feature Development |  | 2d | 2012-10-17 09:00 | 2012-10-18 19:00 | 10 | 0d | Developer | 16h |
| 12 | 2.6 | Write Update Scripts |  | 1d | 2012-10-19 09:00 | 2012-10-19 19:00 | 11 | 0d | Developer | 8h |
| 13 | 2.7 | Feature Development Finished | milestone | 0d | 2012-10-19 19:00 | 2012-10-19 19:00 | 12 | 0d |  |  |
| 15 | 3 | **Testing & Sign-Off** |  | 4.5d? | 2012-10-24 09:00 | 2012-10-30 13:00 | 13FS+2d | 0d |  | 48h |
| 16 | 3.1 | Internal Testing and Product Integration |  | 2d | 2012-10-24 09:00 | 2012-10-25 19:00 |  | 2.5d | Developer | 16h |
| 17 | 3.2 | Present Result to Customer |  | 0.5d | 2012-10-24 09:00 | 2012-10-24 13:00 |  | 0d | Consultant; Developer | 8h |
| 18 | 3.3 | Fix Report Details |  | 1d | 2012-10-26 15:00 | 2012-10-29 13:00 | 17FS+2d | 0d | Developer | 8h |
| 19 | 3.4 | Install on Customer Production Server |  | 0.5d? | 2012-10-29 15:00 | 2012-10-29 19:00 | 18 | 0d | Developer; Administrator | 8h |
| 20 | 3.5 | Sign-Off |  | 0.5d | 2012-10-30 09:00 | 2012-10-30 13:00 | 19 | 0d | Presales; Consultant | 8h |
