# PO-Add-On-Portfolio-Reports.121011.xml

Schedule from MS Project XML, 2012-10-01 to 2012-11-08.

## Calendars

- Estándar: Mon-Fri 09:00-13:00, 15:00-19:00; Sat-Sun off.

## Resources

| Resource |
| --- |
| Presales |
| Consultant |
| Administrator |
| Developer |

## Schedule

| ID | WBS | Task | Type | Duration | Start | Finish | Predecessors | Total slack | Resources | Work |
| --- | --- | --- | --- | --- | --- | --- | --- | --- | --- | --- |
| 1 | 1 | **Presales and Project Definition** |  | 7.75d | 2012-10-01 | 2012-10-10 |  | 0d |  | 6h |
| 2 | 1.1 | Define report fields and semantics |  | 0.5d | 2012-10-01 | 2012-10-01 |  | 0d | Consultant | 4h |
| 3 | 1.2 | Quoting |  | 0.25d | 2012-10-03 | 2012-10-03 | 2FS+2d | 0d | Presales | 2h |
| 4 | 1.3 | Customer Order | milestone | 0d | 2012-10-10 | 2012-10-10 | 3FS+5d | 0d |  |  |
| 6 | 2 | **Report Development** |  | 16d | 2012-10-17 | 2012-11-08 | 1FS+5d | 0d |  | 80h |
| 7 | 2.1 | Report Portfolio Controlling by Cost Center |  | 2d | 2012-10-17 | 2012-10-19 |  | 0d | Developer | 16h |
| 8 | 2.2 | Report Customer Value |  | 2d | 2012-10-19 | 2012-10-23 | 7 | 0d | Developer | 16h |
| 9 | 2.3 | Report Graphical Evolution of Risk |  | 3d | 2012-10-23 | 2012-10-26 | 8 | 0d | Developer | 24h |
| 10 | 2.4 | Report Development Finished | milestone | 0d | 2012-10-26 | 2012-10-26 | 9 | 0d |  |  |
| 12 | 2.5 | **Testing & Sign-Off** |  | 7d | 2012-10-30 | 2012-11-08 | 10FS+2d | 0d |  | 24h |
| 13 | 2.5.1 | Present Reports to Customer |  | 0.5d | 2012-10-30 | 2012-10-31 |  | 0d | Consultant; Developer | 8h |
| 14 | 2.5.2 | Fix Report Details |  | 1d | 2012-11-02 | 2012-11-05 | 13FS+2d | 0d | Developer | 8h |
| 15 | 2.5.3 | Sign-Off |  | 0.5d | 2012-11-08 | 2012-11-08 | 14FS+3d | 0d | Presales; Consultant | 8h |
