# Play-House

Schedule from MS Project XML, 2002-08-21 to 2003-04-09.
]project-open[

## Calendars

- Standard: Mon-Fri 08:00-12:00, 13:00-17:00; Sat-Sun off.

## Resources

| Resource |
| --- |
| Database Administrator |
| Junior Developer |
| Project Manager |
| Developer |
| Tester |
| Senior Developer |

## Schedule

| ID | WBS | Task | Type | Duration | Start | Finish | Predecessors | Total slack | Free slack | Constraint | Resources | Work |
| --- | --- | --- | --- | --- | --- | --- | --- | --- | --- | --- | --- | --- |
| 1 | 1 | **Milestones** |  | 165.53d | 2002-08-21 | 2003-04-09 |  | 0d |  |  |  |  |
| 2 | 1.1 | Project start | milestone | 0d | 2002-08-21 | 2002-08-21 |  | 138d | 0d |  |  |  |
| 3 | 1.2 | Scope freeze | milestone | 0d | 2002-09-03 | 2002-09-03 | 13 | 155.53d |  |  |  |  |
| 4 | 1.4 | Timeline maintenance finished | milestone | 0d | 2002-09-16 | 2002-09-16 | 17 | 146.53d |  |  |  |  |
| 5 | 1.3 | Technical specifications freeze | milestone | 0d | 2002-09-26 | 2002-09-26 | 14 | 138.66d |  |  |  |  |
| 6 | 1.5 | User maintenance finished | milestone | 0d | 2002-11-01 | 2002-11-01 | 24 | 112.78d |  |  |  |  |
| 7 | 1.7 | Printing finished | milestone | 0d | 2002-11-27 | 2002-11-27 | 84 | 94.66d |  |  |  |  |
| 8 | 1.6 | Category maintenance finished | milestone | 0d | 2002-12-17 | 2002-12-17 | 28 | 81.03d |  |  |  |  |
| 9 | 1.8 | Front-end development finished | milestone | 0d | 2002-12-24 | 2002-12-24 | 54 | 76.03d |  |  |  |  |
| 10 | 1.10 | System tested | milestone | 0d | 2003-04-09 | 2003-04-09 | 105 | 0d |  |  |  |  |
| 12 | 2 | **Scoping & Design Workshop** |  | 40d | 2002-08-21 | 2002-10-15 |  | 125.53d |  |  |  | 319h |
| 13 | 2.1 | Customer workshop |  | 10d | 2002-08-21 | 2002-09-03 | 2 | 138d | 0d |  | Database Administrator; Junior Developer; Project Manager | 120h |
| 14 | 2.2 | Data-model design |  | 8d | 2002-09-16 | 2002-09-26 | 13 | 138.66d | 0d | start no earlier than 2002-07-01 | Project Manager; Junior Developer; Database Administrator | 119h |
| 15 | 2.3 | Change-management plan |  | 7d | 2002-10-03 | 2002-10-15 | 13 | 125.53d |  | start no earlier than 2002-10-03 | Developer; Project Manager | 80h |
| 17 | 3 | **Timeline Maintenance** |  | 11d | 2002-09-02 | 2002-09-16 |  | 52.01d | 0d |  |  | 88h |
| 18 | 3.1 | Timeline day maintenance |  | 1.5d | 2002-09-02 | 2002-09-03 |  | 52.01d | 0d | start no earlier than 2002-08-26 | Junior Developer | 12h |
| 19 | 3.2 | Map timelines to categories |  | 3.5d | 2002-09-03 | 2002-09-06 | 18 | 52.01d | 0d |  | Junior Developer | 28h |
| 20 | 3.3 | Timeline calendar integration |  | 3d | 2002-09-09 | 2002-09-11 | 19 | 52.01d | 0d |  | Junior Developer | 24h |
| 21 | 3.4 | Upload timelines |  | 2d | 2002-09-12 | 2002-09-13 | 20 | 52.01d | 0d |  | Junior Developer | 16h |
| 22 | 3.5 | Timeline reporting |  | 1d | 2002-09-16 | 2002-09-16 | 21 | 52.01d | 0d |  | Junior Developer | 8h |
| 24 | 4 | **User Maintenance** |  | 21.75d | 2002-10-03 | 2002-11-01 |  | 53.12d | 0d |  |  | 89h |
| 25 | 4.1 | User maintenance |  | 7.75d | 2002-10-03 | 2002-10-14 | 51 | 64.25d | 10.12d |  |  | 66h |
| 26 | 4.2 | Group maintenance |  | 2.88d | 2002-10-28 | 2002-11-01 | 25, 82 | 53.12d | 0d |  | Developer | 23h |
| 28 | 5 | **Category Maintenance** |  | 55.5d | 2002-10-01 | 2002-12-17 |  | 52.01d | 0d |  |  | 296h |
| 29 | 5.1 | Maintain categories - CRUD |  | 9d | 2002-10-01 | 2002-10-11 | 22 | 52.01d | 0d |  | Junior Developer | 72h |
| 30 | 5.2 | Maintain category detailes - CRUD |  | 7.5d | 2002-10-14 | 2002-10-23 | 29 | 52.01d | 0d |  | Junior Developer | 60h |
| 31 | 5.3 | Category scheduling |  | 7d | 2002-11-01 | 2002-11-12 | 30, 26 | 53.12d | 0d |  | Developer | 56h |
| 32 | 5.4 | Edit category schedules |  | 2.5d | 2002-12-02 | 2002-12-04 | 30 | 52.01d | 0d |  | Junior Developer | 20h |
| 33 | 5.5 | Maintain assignments |  | 1d | 2002-12-04 | 2002-12-05 | 32 | 52.01d | 0d |  | Junior Developer | 8h |
| 34 | 5.6 | View category assignments |  | 1d | 2002-12-05 | 2002-12-06 | 33 | 52.01d | 0d |  | Junior Developer | 8h |
| 35 | 5.7 | Conflict resolution |  | 2d | 2002-12-13 | 2002-12-17 | 34 | 52.01d |  |  | Junior Developer | 16h |
| 36 | 5.8 | Category detail timeline maintenance |  | 6d | 2002-11-27 | 2002-12-05 | 86 | 50d | 0d |  | Database Administrator | 48h |
| 37 | 5.9 | Category invoicing - timeline, category, time |  | 1d | 2002-11-29 | 2002-11-29 |  | 53.88d | 3.88d |  | Junior Developer | 8h |

Notes:
- 5: PO-Comment #094
- 13: PO-Comment #093
- 14: PO-Comment #095
- 15: PO-Comment #096
- 18: PO-Comment #002
- 19: PO-Comment #003
- 20: PO-Comment #004
- 21: PO-Comment #005
- 22: PO-Comment #091
- 25: PO-Comment #006
- 26: PO-Comment #007
- 29: PO-Comment #009
- 30: PO-Comment #010
- 31: PO-Comment #011
- 32: PO-Comment #012
- 33: PO-Comment #013
- 34: PO-Comment #014
- 35: PO-Comment #015
- 36: PO-Comment #016
- 37: PO-Comment #017

| ID | WBS | Task | Duration | Start | Finish | Predecessors | Total slack | Free slack | Constraint | Resources | Work |
| --- | --- | --- | --- | --- | --- | --- | --- | --- | --- | --- | --- |
| 39 | 6 | **Capacity Management** | 3.75d | 2002-08-21 | 2002-08-26 |  | 161.78d |  |  |  | 34h |
| 40 | 6.1 | Capacity management updates | 3.75d | 2002-08-21 | 2002-08-26 |  | 161.78d |  |  |  | 34h |
| 42 | 7 | **Other** | 136.51d | 2002-08-21 | 2003-02-27 |  | 0d |  |  |  | 399h |
| 43 | 7.1 | Map date/time to timeline | 4d | 2002-08-21 | 2002-08-28 |  | 72d | 2d |  | Developer | 32h |
| 44 | 7.2 | Map time range to time slots | 5d | 2002-09-02 | 2002-09-10 | 43 | 68d | 0d |  | Developer | 40h |
| 45 | 7.3 | Check availability for activity | 5d | 2002-09-11 | 2002-09-23 | 44 | 64d | 0d |  | Developer | 40h |
| 46 | 7.4 | Check availability for non-activity | 5d | 2002-08-21 | 2002-08-27 |  | 50d | 0d |  | Database Administrator | 40h |
| 47 | 7.5 | Lock assignments | 5.88d | 2002-09-09 | 2002-09-16 | 46 | 50d | 0d |  | Database Administrator | 47h |
| 48 | 7.6 | Release assignment detail | 5d | 2002-10-01 | 2002-10-08 | 47 | 50d | 0d |  | Database Administrator | 40h |
| 49 | 7.7 | Confirm assignment detail | 5d | 2002-10-08 | 2002-10-15 | 48 | 50d | 0d |  | Database Administrator | 40h |
| 50 | 7.8 | Unlock assignments | 5d | 2002-10-15 | 2002-10-22 | 49 | 50d | 0d |  | Database Administrator | 40h |
| 51 | 7.9 | Clean up demodata | 5d | 2002-09-24 | 2002-10-02 | 45 | 62d | 0d |  | Developer | 40h |
| 52 | 7.10 | Open slot assignments | 50d | 2002-12-19 | 2003-02-27 |  | 0d |  | start no earlier than 2002-08-22 | Project Manager [10%] | 40h |
| 54 | 8 | **Front End Enhancements** | 89.5d | 2002-08-21 | 2002-12-24 |  | 46d | 0d |  |  | 579h |
| 55 | 8.1 | Integration with search egine | 5d | 2002-08-26 | 2002-09-02 |  | 108.51d | 0d | start no earlier than 2002-08-26 | Senior Developer | 40h |
| 56 | 8.2 | Existing search - show category details | 4d | 2002-09-02 | 2002-09-06 | 55 | 108.51d | 0d |  | Senior Developer | 32h |
| 57 | 8.3 | View one assigment | 3d | 2002-09-06 | 2002-09-11 | 56 | 108.51d | 0d |  | Senior Developer | 24h |
| 58 | 8.4 | View One assignment detail | 3d | 2002-09-11 | 2002-09-16 | 57 | 108.51d | 0d |  | Senior Developer | 24h |
| 59 | 8.5 | Activity availability search | 4.88d | 2002-09-16 | 2002-09-20 | 58 | 108.51d | 0d |  | Senior Developer | 39h |
| 60 | 8.6 | Permissions of search screens | 1d | 2002-09-23 | 2002-09-23 | 59 | 108.51d | 0d |  | Senior Developer | 8h |
| 61 | 8.7 | Availability results | 4d | 2002-09-24 | 2002-09-27 | 60 | 108.51d |  |  | Senior Developer | 32h |
| 62 | 8.8 | Confirm assignments (different permissions) | 3d | 2002-08-21 | 2002-08-23 |  | 46d | 0d |  | Junior Developer | 24h |
| 63 | 8.9 | Apply discount Javascript | 6d | 2002-10-23 | 2002-10-31 | 62 | 46d | 0d |  | Junior Developer | 48h |
| 64 | 8.10 | Facilitate promotional discounts | 3d | 2002-10-31 | 2002-11-05 | 63 | 46d | 0d |  | Junior Developer | 24h |
| 65 | 8.11 | Accept partial payments | 2d | 2002-11-05 | 2002-11-07 | 64 | 46d | 0d |  | Junior Developer | 16h |
| 66 | 8.12 | Attend partial payments details | 2d | 2002-11-07 | 2002-11-11 | 65 | 46d | 0d |  | Junior Developer | 16h |
| 67 | 8.13 | Attend partial payments screen | 2d | 2002-11-11 | 2002-11-13 | 66 | 46d | 0d |  | Junior Developer | 16h |
| 68 | 8.14 | Cancel assignments detail | 0.5d | 2002-11-13 | 2002-11-13 | 67 | 46d | 0d |  | Junior Developer | 4h |
| 69 | 8.15 | Modify assignment-detail | 7d | 2002-11-14 | 2002-11-22 | 68 | 46d | 0d |  | Junior Developer | 56h |
| 70 | 8.16 | Cancel assignment | 2d | 2002-11-25 | 2002-11-26 | 69 | 46d | 0d |  | Junior Developer | 16h |
| 71 | 8.17 | Refunds screen | 2d | 2002-11-27 | 2002-11-28 | 70 | 46d | 0d |  | Junior Developer | 16h |
| 72 | 8.18 | Assignment logic | 5d | 2002-12-17 | 2002-12-24 | 71 | 47.01d |  |  | Junior Developer | 40h |
| 73 | 8.19 | Credit card payment | 13d | 2002-08-21 | 2002-10-11 |  | 98.63d |  |  | Senior Developer | 104h |

Notes:
- 40: PO-Comment #018
- 43: PO-Comment #021
- 44: PO-Comment #022
- 45: PO-Comment #023
- 46: PO-Comment #024
- 47: PO-Comment #025
- 48: PO-Comment #026
- 49: PO-Comment #027
- 50: PO-Comment #028
- 51: PO-Comment #029
- 52: PO-Comment #030
- 55: PO-Comment #032
- 56: PO-Comment #033
- 57: PO-Comment #034
- 58: PO-Comment #035
- 59: PO-Comment #036
- 60: PO-Comment #037
- 61: PO-Comment #038
- 62: PO-Comment #040
- 63: PO-Comment #041
- 64: PO-Comment #042
- 65: PO-Comment #043
- 66: PO-Comment #044
- 67: PO-Comment #045
- 68: PO-Comment #048
- 69: PO-Comment #050
- 70: PO-Comment #051
- 71: PO-Comment #052
- 72: PO-Comment #053

| ID | WBS | Task | Duration | Start | Finish | Predecessors | Total slack | Free slack | Constraint | Resources | Work |
| --- | --- | --- | --- | --- | --- | --- | --- | --- | --- | --- | --- |
| 75 | 9 | **Home Page Maintenance** | 15d | 2002-10-22 | 2002-11-12 |  | 50d | 76.63d |  |  | 120h |
| 76 | 9.1 | Home page | 10d | 2002-10-22 | 2002-11-05 | 50 | 50d | 0d |  | Database Administrator | 80h |
| 77 | 9.2 | Clickthrough assignment | 2d | 2002-11-05 | 2002-11-07 | 76 | 50d | 0d |  | Database Administrator | 16h |
| 78 | 9.3 | Day sheet (easy versionversions) | 3d | 2002-11-07 | 2002-11-12 | 77 | 50d | 0d |  | Database Administrator | 24h |
| 80 | 10 | **Permissions** | 8.88d | 2002-10-16 | 2002-10-28 |  | 54.12d |  |  |  | 39h |
| 81 | 10.1 | User profiles | 2.88d | 2002-10-16 | 2002-10-22 | 51 | 56.12d | 0d | start no earlier than 2002-10-03 | Developer | 23h |
| 82 | 10.2 | User actions | 2d | 2002-10-22 | 2002-10-28 | 81 | 54.12d | 0d |  | Developer | 16h |
| 84 | 11 | **Printing Support** | 32.75d | 2002-10-14 | 2002-11-27 |  | 76.25d | 0d |  |  | 76h |
| 85 | 11.1 | Laser printer specifications | 4d | 2002-10-14 | 2002-10-18 |  | 123.41d |  | start no earlier than 2002-10-14 | Project Manager | 32h |
| 86 | 11.2 | Print assignments | 3d | 2002-11-22 | 2002-11-27 | 92 | 50d | 0d |  | Database Administrator | 24h |
| 87 | 11.3 | Print detailed information | 1d | 2002-10-21 | 2002-10-22 |  | 71.25d | 0d | start no earlier than 2002-10-21 | Project Manager | 8h |
| 88 | 11.4 | Print assignment details | 1.5d | 2002-10-22 | 2002-10-23 | 87 | 71.25d | 18.12d |  | Senior Developer | 12h |
| 90 | 12 | **System Installation** | 26.76d | 2002-11-12 | 2002-12-19 |  | 50d |  |  |  | 306.6h |
| 91 | 12.1 | PostgreSQL installation | 2d | 2002-11-12 | 2002-11-14 | 78 | 50d | 0d |  | Database Administrator | 16h |
| 92 | 12.2 | Database import | 6d | 2002-11-14 | 2002-11-22 | 91 | 50d | 0d |  | Database Administrator | 48h |
| 93 | 12.3 | Linux administration | 2d | 2002-11-12 | 2002-11-14 | 31 | 53.12d | 0d |  | Developer | 16h |
| 94 | 12.4 | PostgreSQL administration | 2d | 2002-11-14 | 2002-11-18 | 93 | 53.12d | 0d |  | Developer | 16h |
| 95 | 12.5 | AOLserver installation (inc. Nsreturnz) | 2d | 2002-11-18 | 2002-11-20 | 94, 88 | 53.12d | 0d |  | Senior Developer | 16h |
| 96 | 12.6 | ]po[ base installation | 1d | 2002-11-20 | 2002-11-21 | 95 | 53.12d | 0d |  | Senior Developer | 8h |
| 97 | 12.7 | Postfix installation | 2d | 2002-11-21 | 2002-11-25 | 96 | 53.12d | 0d |  | Senior Developer | 16h |
| 98 | 12.8 | Pound installation | 1d | 2002-11-25 | 2002-11-26 | 97 | 53.12d | 0d |  | Senior Developer | 8h |
| 99 | 12.9 | OpenSSH installation | 1d | 2002-11-26 | 2002-11-27 | 98 | 53.12d | 3.12d |  | Senior Developer | 8h |
| 100 | 12.10 | System and performance testing | 9.63d | 2002-12-05 | 2002-12-19 | 78, 31, 86, 36, 37, 88, 99FS+3d | 50d |  |  | Tester; Database Administrator; Developer; Project Manager [100.01%]; Junior Developer [100%] | 154.6h |
| 103 | 13 | **PM & Other Tasks** | 160.53d | 2002-08-28 | 2003-04-09 |  | 0d |  |  |  | 689h |
| 104 | 13.1 | Project Management | 57.1d | 2002-08-28 | 2002-11-29 |  | 93.43d |  |  | Project Manager | 456.8h |
| 105 | 13.2 | GUI and functionality testing | 29.02d | 2003-02-27 | 2003-04-09 | 54, 90, 75, 42, 28, 17 | 0d |  | as late as possible | Tester | 232.2h |

Notes:
- 76: PO-Comment #058
- 77: PO-Comment #092
- 78: PO-Comment #059
- 81: PO-Comment #066
- 82: PO-Comment #067
- 85: PO-Comment #068
- 86: PO-Comment #070
- 87: PO-Comment #072
- 88: PO-Comment #073
- 91: PO-Comment #077
- 92: PO-Comment #078
- 93: PO-Comment #079
- 94: PO-Comment #080
- 95: PO-Comment #081
- 96: PO-Comment #082
- 97: PO-Comment #083
- 98: PO-Comment #084
- 99: PO-Comment #085
- 104: PO-Comment #089
- 105: PO-Comment #090
