# Special Machine Construction Project

Schedule from MS Project XML, 2012-09-03 to 2013-03-06.
]project-open[

## Calendars

- Standard: Mon-Fri 08:00-12:00, 13:00-17:00; Sat-Sun off.

## Resources

| Resource |
| --- |
| Presales |
| Consultant |
| Database Administrator |
| Junior Developer |
| Developer |
| Tester |
| Senior Developer |

## Schedule

| ID | WBS | Task | Type | Duration | Start | Finish | Predecessors | Total slack | Free slack | Constraint | Resources | Work |
| --- | --- | --- | --- | --- | --- | --- | --- | --- | --- | --- | --- | --- |
| 1 | 1.2.1 | **Milestones** |  | 133d | 2012-09-03 | 2013-03-06 |  | 0d |  |  |  |  |
| 2 | 1.2.1.1 | Best. Zukaufteile auslösen | milestone | 0d | 2012-09-03 | 2012-09-03 |  | 113d | 0d | start no earlier than 2012-09-03 |  |  |
| 3 | 1.2.1.3 | Zukaufteile vorhanden | milestone | 0d | 2012-09-28 | 2012-09-28 | 2FS+20d | 113d |  |  |  |  |
| 4 | 1.2.2.4 | Schnittstellen-Konstruktion abgeschlossen | milestone | 0d | 2012-10-02 | 2012-10-02 | 17 | 107.25d | 0d |  |  |  |
| 5 | 1.4.3.1 | Anlieferung Fremdfertiger | milestone | 0d | 2012-12-17 | 2012-12-17 |  | 58d |  | start no earlier than 2012-12-17 |  |  |
| 6 | 1.4.3.5 | Aufbau abgeschlossen | milestone | 0d | 2013-01-17 | 2013-01-17 | 32 | 0d |  |  |  |  |
| 7 | 1.5.4 | Vorabnahme | milestone | 0d | 2013-02-11 | 2013-02-11 | 40 | 0d |  | start no earlier than 2013-02-11 | Tester |  |
| 8 | 1.6.6 | Endabnahme | milestone | 0d | 2013-03-06 | 2013-03-06 | 49 | 0d |  | start no earlier than 2013-02-25 | Tester [6.25%] |  |
| 9 | 1.2 | **Phase Konstruktion** |  | 23d | 2012-09-07 | 2012-10-09 |  | 0d |  |  |  | 162.67h |
| 10 | 1.2.2 | **Schnittstelle Kunde** |  | 23d | 2012-09-07 | 2012-10-09 |  | 0d |  |  |  | 162.67h |
| 11 | 1.2.2.1 | Abstimmung bzgl. Mechanik+Elektrik+SW |  | 6d | 2012-09-07 | 2012-09-14 |  | 0d |  | start no earlier than 2012-09-07 | Presales [83.33%] | 40h |
| 12 | 1.2.2.2 | **Konstruktion Mechanik** |  | 4d | 2012-09-17 | 2012-09-20 | 11 | 0d |  |  |  | 30h |
| 13 | 1.2.2.2.1 | Anpassungskonstruktion/bei Bedarf |  | 4d | 2012-09-17 | 2012-09-20 |  | 0d |  |  | Presales [93.75%] | 30h |
| 14 | 1.2.2.3 | **Konstruktion Elektrik** |  | 17d | 2012-09-17 | 2012-10-09 | 11 | 2d | 0d |  |  | 72.67h |
| 15 | 1.2.2.3.1 | Bauteileauswahl |  | 1d | 2012-09-17 | 2012-09-17 |  | 2d | 0d |  | Consultant [8.33%] | 0.67h |
| 16 | 1.2.2.3.2 | Schaltplan erstellen |  | 10d | 2012-09-18 | 2012-10-01 | 15 | 2d | 0d |  | Consultant [75%] | 60h |
| 17 | 1.2.2.3.3 | Stückliste/Bestellliste |  | 1d | 2012-10-02 | 2012-10-02 | 16 | 2d | 0d |  | Consultant [25%] | 2h |
| 18 | 1.2.2.3.4 | Dokumentation |  | 5d | 2012-10-03 | 2012-10-09 | 17 | 2d |  |  | Consultant [25%] | 10h |
| 19 | 1.2.2.5 | Nachtrags-Angebot erstellen |  | 3.75d | 2012-10-03 | 2012-10-08 | 13, 4 | 107.25d |  |  | Senior Developer [66.67%] | 20h |
| 20 | 1.3 | **Phase Fertigung** |  | 53d | 2012-09-21 | 2012-12-04 |  | 0d |  |  |  | 314h |
| 21 | 1.3.1 | **Fertigung Mechanik** |  | 40d | 2012-09-21 | 2012-11-15 | 13 | 0d |  |  |  | 200h |
| 22 | 1.3.1 | Fertigung Einzelteile |  | 40d | 2012-09-21 | 2012-11-15 |  | 0d |  |  | Database Administrator [62.5%] | 200h |
| 23 | 1.3.2 | **Fertigung Elektrik** |  | 40d | 2012-10-10 | 2012-12-04 | 14 | 2d | 0d |  |  | 64h |
| 24 | 1.3.2.1 | Schaltschrank |  | 40d | 2012-10-10 | 2012-12-04 |  | 2d |  |  | Developer [12.5%] | 40h |
| 25 | 1.3.2.4 | Kabel |  | 40d | 2012-10-10 | 2012-12-04 |  | 2d |  |  | Developer [7.5%] | 24h |

| ID | WBS | Task | Duration | Start | Finish | Predecessors | Total slack | Constraint | Resources | Work |
| --- | --- | --- | --- | --- | --- | --- | --- | --- | --- | --- |
| 26 | 1.3.3 | **Software** | 40d | 2012-10-10 | 2012-12-04 |  | 66d |  |  | 50h |
| 27 | 1.3.3.1 | Software erstellen | 40d | 2012-10-10 | 2012-12-04 | 14 | 66d |  | Tester [15.62%] | 50h |
| 28 | 1.4 | **Phase Montage** | 45d | 2012-11-16 | 2013-01-17 |  | 0d |  |  | 400h |
| 29 | 1.4.1 | Aufbau Mechanik | 35d | 2012-11-16 | 2013-01-03 | 21 | 0d |  | Junior Developer [92.92%] | 260h |
| 30 | 1.4.2 | Aufbau Elektrik | 20d | 2012-12-05 | 2013-01-01 | 23, 21 | 2d |  | Developer [50%] | 80h |
| 31 | 1.4.3 | **Integration Fremdfertiger** | 10d | 2013-01-04 | 2013-01-17 | 30 | 0d |  |  | 60h |
| 32 | 1.4.3.4 | Funktionstest | 10d | 2013-01-04 | 2013-01-17 | 23, 29 | 0d |  | Tester [75%] | 60h |
| 33 | 1.5 | **Phase Inbetriebnahme** | 14d | 2013-01-23 | 2013-02-11 |  | 0d |  |  | 103.9h |
| 34 | 1.5.1 | **Mechanik** | 11d | 2013-01-23 | 2013-02-06 |  | 0d |  |  | 75h |
| 35 | 1.5.1.1 | Vakuum-Funktionstest | 6d | 2013-01-23 | 2013-01-30 | 6FS+3d | 0d |  | Tester [83.33%] | 40h |
| 36 | 1.5.1.2 | mechanischer Ablauftest | 5d | 2013-01-31 | 2013-02-06 | 35 | 0d |  | Tester [87.5%] | 35h |
| 37 | 1.5.2 | **Elektrik** | 4d | 2013-01-28 | 2013-01-31 |  | 4d |  |  | 6.4h |
| 38 | 1.5.2.1 | Basis-Funktionstest (elektr.) | 4d | 2013-01-28 | 2013-01-31 | 6 | 4d | start no earlier than 2013-01-28 | Developer [20%] | 6.4h |
| 39 | 1.5.3 | **Software** | 3d | 2013-02-07 | 2013-02-11 |  | 0d |  |  | 22.5h |
| 40 | 1.5.3.1 | SW-Test | 3d | 2013-02-07 | 2013-02-11 | 36, 38 | 0d |  | Tester [93.75%] | 22.5h |
| 41 | 1.6 | **Installation Kunde** | 12d | 2013-02-19 | 2013-03-06 | 7FS+5d | 0d |  |  | 88h |
| 42 | 1.6.1 | Abbau, Verpackung, Transport | 3d | 2013-02-19 | 2013-02-21 |  | 0d |  | Junior Developer [66.67%] | 16h |
| 43 | 1.6.3 | **Installation mechanisch** | 2d | 2013-02-22 | 2013-02-25 |  | 0d |  |  | 16h |
| 44 | 1.6.3.1 | Aufbau | 1d | 2013-02-22 | 2013-02-22 | 42 | 0d |  | Junior Developer | 8h |
| 45 | 1.6.3.2 | Funktionstest | 1d | 2013-02-25 | 2013-02-25 | 44 | 0d |  | Junior Developer | 8h |
| 46 | 1.6.4 | **Installation elektrisch** | 2d | 2013-02-26 | 2013-02-27 |  | 0d |  |  | 16h |
| 47 | 1.6.4.1 | Aufbau | 1d | 2013-02-26 | 2013-02-26 | 45 | 0d |  | Developer | 8h |
| 48 | 1.6.4.2 | Funktionstest | 1d | 2013-02-27 | 2013-02-27 | 47 | 0d |  | Developer | 8h |
| 49 | 1.6.5 | Inbetriebnahme | 5d | 2013-02-28 | 2013-03-06 | 48 | 0d |  | Tester | 40h |
